# Deployment Mgmt 2020.03.15a

Schedule from MS Project, 2020-05-15 to 2021-04-20.

## Calendars

- Standard: Mon-Fri 08:00-12:00, 13:00-17:00; Sat-Sun off.

## Schedule

| ID | WBS | Task | Type | Duration | Start | Finish | Predecessors | Total slack | Free slack | Constraint |
| --- | --- | --- | --- | --- | --- | --- | --- | --- | --- | --- |
| 1 | 1 | **Deployment Planning & Pre-Work** |  | 182d | 2020-05-15 | 2021-01-25 |  | 0d |  |  |
| 2 | 1.1 | Kick-Off Deployment Planning | milestone | 0d | 2020-05-15 | 2020-05-15 |  | 0d |  | start no earlier than 2020-05-15 |
| 3 | 1.2 | Define Roles & Responsibilities |  | 1d | 2020-05-15 | 2020-05-15 | 2 | 0d |  |  |
| 4 | 1.3 | **Prepare HLD (v1)** |  | 14d | 2020-05-18 | 2020-06-04 |  | 0d |  |  |
| 5 | 1.3.1 | Network Design for HLD |  | 14d | 2020-05-18 | 2020-06-04 | 3 | 0d |  |  |
| 6 | 1.3.2 | Site Selection for HLD |  | 14d | 2020-05-18 | 2020-06-04 | 3 | 0d |  |  |
| 7 | 1.4 | **Develop Schedule (v1)** |  | 16d | 2020-06-05 | 2020-06-26 |  | 1d |  |  |
| 8 | 1.4.1 | Estimate Activity Durations |  | 7d | 2020-06-05 | 2020-06-15 | 4 | 1d | 0d |  |
| 9 | 1.4.2 | Estimate Activity Resources |  | 7d | 2020-06-09 | 2020-06-17 | 8SS+2d | 1d | 0d |  |
| 10 | 1.4.3 | Build Deployment Schedule |  | 7d | 2020-06-18 | 2020-06-26 | 9, 8 | 1d |  |  |
| 11 | 1.5 | **Determine Budget (v1)** |  | 17d | 2020-06-05 | 2020-06-29 |  | 0d |  |  |
| 12 | 1.5.1 | Estimate Costs |  | 7d | 2020-06-05 | 2020-06-15 | 4 | 0d |  |  |
| 13 | 1.5.2 | Reserves Analysis |  | 3d | 2020-06-16 | 2020-06-18 | 12 | 0d |  |  |
| 14 | 1.5.3 | Build HL Budget |  | 7d | 2020-06-19 | 2020-06-29 | 13 | 0d |  |  |
| 15 | 1.6 | **Plan Risk Management** |  | 19d | 2020-05-18 | 2020-06-11 |  | 12d |  |  |
| 16 | 1.6.1 | Identify Risks |  | 4d | 2020-05-18 | 2020-05-21 | 3 | 12d | 0d |  |
| 17 | 1.6.2 | Qualitative Risk Analysis |  | 4d | 2020-05-22 | 2020-05-27 | 16 | 12d | 0d |  |
| 18 | 1.6.3 | Quantitative Risk Analysis |  | 4d | 2020-05-28 | 2020-06-02 | 17 | 12d | 0d |  |
| 19 | 1.6.4 | Plan Risk Responses |  | 7d | 2020-06-03 | 2020-06-11 | 18 | 12d |  |  |
| 20 | 1.7 | Review Plan v1 |  | 7d | 2020-06-30 | 2020-07-08 | 7, 11, 15 | 0d |  |  |
| 21 | 1.8 | Refine HLD (v2) |  | 7d | 2020-07-09 | 2020-07-17 | 20 | 0d |  |  |
| 22 | 1.9 | Refine Budget (v2) |  | 7d | 2020-07-09 | 2020-07-17 | 20 | 0d |  |  |
| 23 | 1.10 | Refine Schedule (v2) |  | 7d | 2020-07-09 | 2020-07-17 | 20 | 0d |  |  |
| 24 | 1.11 | Obtain Plan v2 Approval |  | 3d | 2020-07-20 | 2020-07-22 | 21, 22, 23 | 0d |  |  |
| 25 | 1.12 | Kick-Off Deployment Pre-Work | milestone | 0d | 2020-07-22 | 2020-07-22 | 24 | 0d |  |  |

| ID | WBS | Task | Type | Duration | Start | Finish | Predecessors | Total slack | Free slack |
| --- | --- | --- | --- | --- | --- | --- | --- | --- | --- |
| 26 | 1.13 | **Select Vendors** |  | 63d | 2020-07-23 | 2020-10-19 |  | 0d |  |
| 27 | 1.13.1 | Prepare and Launch RFI |  | 7d | 2020-07-23 | 2020-07-31 | 25 | 0d |  |
| 28 | 1.13.2 | Receive Vendor Responses |  | 7d | 2020-08-03 | 2020-08-11 | 27 | 0d |  |
| 29 | 1.13.3 | Qualify Sellers |  | 7d | 2020-08-12 | 2020-08-20 | 28 | 0d |  |
| 30 | 1.13.4 | Prepare and Launch RFP |  | 14d | 2020-08-21 | 2020-09-09 | 29 | 0d |  |
| 31 | 1.13.5 | Receive and Evaluate Proposals |  | 14d | 2020-09-10 | 2020-09-29 | 30 | 0d |  |
| 32 | 1.13.6 | Select Hardware Vendors |  | 14d | 2020-09-30 | 2020-10-19 | 31 | 131d |  |
| 33 | 1.13.7 | Select TowerCos |  | 14d | 2020-09-30 | 2020-10-19 | 31 | 0d |  |
| 34 | 1.13.8 | Select FiberCos |  | 14d | 2020-09-30 | 2020-10-19 | 31 | 0d |  |
| 35 | 1.13.9 | Select I&C Partners |  | 14d | 2020-09-30 | 2020-10-19 | 31 | 131d |  |
| 36 | 1.13.10 | Select Construction Partners |  | 14d | 2020-09-30 | 2020-10-19 | 31 | 131d |  |
| 37 | 1.14 | Site Selection |  | 30d | 2020-10-21 | 2020-12-01 | 33FS+1d | 6d |  |
| 38 | 1.15 | Infrastructure Design |  | 30d | 2020-10-23 | 2020-12-03 | 33FS+3d, 34FS+3d | 0d |  |
| 39 | 1.16 | Low Level Design (LLD) |  | 60d | 2020-11-03 | 2021-01-25 | 37SS+3d, 38SS+7d | 0d |  |
| 40 | 2 | **Deployment Execution** |  | 100d | 2020-11-20 | 2021-04-09 |  | 0d |  |
| 41 | 2.1 | Kick-Off Deployment Execution | milestone | 0d | 2020-11-20 | 2020-11-20 | 39SS+14d | 0d |  |
| 42 | 2.2 | Onboard Vendors |  | 7d | 2020-11-23 | 2020-12-01 | 41 | 100d |  |
| 43 | 2.3 | Hardware Delivery |  | 60d | 2020-11-23 | 2021-02-12 | 41 | 47d |  |
| 44 | 2.4 | Site Surveys |  | 60d | 2020-11-23 | 2021-02-12 | 41 | 0d |  |
| 45 | 2.5 | Site Acquisition |  | 60d | 2020-12-02 | 2021-02-23 | 44SS+7d | 0d |  |
| 46 | 2.6 | Permits |  | 60d | 2020-12-11 | 2021-03-04 | 45SS+7d | 0d |  |
| 47 | 2.7 | Site Construction |  | 60d | 2020-12-22 | 2021-03-15 | 46SS+7d | 26d |  |
| 48 | 2.8 | Fiber Construction |  | 60d | 2020-12-22 | 2021-03-15 | 46SS+7d | 0d |  |
| 49 | 2.9 | Power Acquisition |  | 60d | 2020-12-25 | 2021-03-18 | 48SS+3d | 0d |  |
| 50 | 2.10 | TX Connection |  | 60d | 2020-12-30 | 2021-03-23 | 49SS+3d | 0d |  |
| 51 | 2.11 | Installation & Commissioning |  | 60d | 2021-01-04 | 2021-03-26 | 50SS+3d | 0d |  |
| 52 | 2.12 | Network Integration |  | 60d | 2021-01-07 | 2021-03-31 | 51SS+3d | 0d |  |
| 53 | 2.13 | Site Acceptance |  | 60d | 2021-01-12 | 2021-04-05 | 52SS+3d | 11d | 4d |
| 54 | 2.14 | Deployment Monitor and Control |  | 100d | 2020-11-23 | 2021-04-09 | 41SS | 7d | 0d |
| 55 | 2.15 | Close Deployment Execution | milestone | 0d | 2021-04-09 | 2021-04-09 | 54, 53 | 7d |  |

| ID | WBS | Task | Type | Duration | Start | Finish | Predecessors | Total slack |
| --- | --- | --- | --- | --- | --- | --- | --- | --- |
| 56 | 3 | **Transfer to Operations** |  | 67d | 2021-01-18 | 2021-04-20 |  | 0d |
| 57 | 3.1 | Site Handover |  | 60d | 2021-01-18 | 2021-04-09 | 52SS+7d | 0d |
| 58 | 3.2 | Babysit Incidences |  | 60d | 2021-01-18 | 2021-04-09 | 57SS | 7d |
| 59 | 3.3 | Load Information to GIS |  | 60d | 2021-01-18 | 2021-04-09 | 52SS+7d | 7d |
| 60 | 3.4 | Load Documentation to DocMgr |  | 60d | 2021-01-18 | 2021-04-09 | 52SS+7d | 7d |
| 61 | 3.5 | Train Operators |  | 30d | 2021-01-18 | 2021-02-26 | 52SS+7d | 37d |
| 62 | 3.6 | Release Close-out Package |  | 7d | 2021-04-12 | 2021-04-20 | 57 | 0d |
| 63 | 3.7 | Document Lessons Learnt |  | 7d | 2021-04-12 | 2021-04-20 | 64FF | 0d |
| 64 | 3.8 | Close Transfer to Operations | milestone | 0d | 2021-04-20 | 2021-04-20 | 62 | 0d |
